# 施工进度

Schedule from a web Gantt chart, 2025-07-23 to 2025-10-30.
Every day is a working day

## Schedule

| ID | WBS | Task | Duration | Start | Finish |
| --- | --- | --- | --- | --- | --- |
| 2 | 1 | **现场准备、深化设计、交底、临时设施、防水** | 54d | 2025-07-23 | 2025-09-14 |
| 3 | 1.1 | 交付团队入场、项目启动会 | 4d | 2025-07-29 | 2025-08-01 |
| 4 | 1.2 | 深化设计、设计交底、图纸会审 | 10d | 2025-07-23 | 2025-08-01 |
| 5 | 1.3 | 技术、安全交底 | 2d | 2025-07-31 | 2025-08-01 |
| 6 | 1.4 | 现场临时设施配置 | 6d | 2025-08-01 | 2025-08-06 |
| 7 | 1.5 | 防水施工及试验 | 31d | 2025-08-15 | 2025-09-14 |
| 8 | 2 | **主要设备/材料到货计划** | 47d | 2025-08-06 | 2025-09-21 |
| 9 | 2.1 | 水泥/防静电漆/顶部漆采购，到货 | 11d | 2025-08-06 | 2025-08-16 |
| 10 | 2.2 | 设备底座、钢结构、管道材料采购到货 | 21d | 2025-08-07 | 2025-08-27 |
| 11 | 2.3 | 桥架到货 | 31d | 2025-08-07 | 2025-09-06 |
| 12 | 2.4 | 轻质隔墙材料采购，到货 | 26d | 2025-08-06 | 2025-08-31 |
| 13 | 2.5 | 照明采购，到货 | 31d | 2025-08-07 | 2025-09-06 |
| 14 | 2.6 | 中压柜、变压器采购，到货 | 41d | 2025-08-07 | 2025-09-16 |
| 15 | 2.7 | 氟泵空调到货 | 41d | 2025-08-07 | 2025-09-16 |
| 16 | 2.8 | UPS、电池架、蓄电池，到货 | 41d | 2025-08-07 | 2025-09-16 |
| 17 | 2.9 | 静电地板到货 | 11d | 2025-08-14 | 2025-08-24 |
| 18 | 2.10 | 风机到货 | 21d | 2025-08-17 | 2025-09-06 |
| 19 | 2.11 | 加湿器到货 | 41d | 2025-08-07 | 2025-09-16 |
| 20 | 2.12 | 低压配电柜/配电箱到货 | 26d | 2025-08-12 | 2025-09-06 |
| 21 | 2.13 | 机柜及冷通道到货 | 31d | 2025-08-06 | 2025-09-05 |
| 22 | 2.14 | 弱电监控设备到货 | 41d | 2025-08-12 | 2025-09-21 |
| 23 | 2.15 | 线缆到货 | 31d | 2025-08-12 | 2025-09-11 |
| 24 | 3 | **机房施工** | 76d | 2025-08-07 | 2025-10-21 |
| 25 | 3.1 | **装修工程** | 40d | 2025-08-07 | 2025-09-15 |
| 26 | 3.1.1 | **拆除工程** | 11d | 2025-08-07 | 2025-08-17 |
| 27 | 3.1.1.1 | 混凝土拆除 | 4d | 2025-08-07 | 2025-08-10 |
| 28 | 3.1.1.2 | 墙体拆除、门窗拆除 | 5d | 2025-08-10 | 2025-08-14 |
| 29 | 3.1.1.3 | 屋面拆除、地面拆除 | 3d | 2025-08-14 | 2025-08-16 |
| 30 | 3.1.1.4 | 渣土外运 | 4d | 2025-08-14 | 2025-08-17 |

| ID | WBS | Task | Duration | Start | Finish |
| --- | --- | --- | --- | --- | --- |
| 31 | 3.1.2 | **顶面工程** | 13d | 2025-08-09 | 2025-08-21 |
| 32 | 3.1.2.1 | 顶面腻子、刷漆 | 3d | 2025-08-09 | 2025-08-11 |
| 33 | 3.1.2.2 | 超细吸音纯白无机纤维喷涂 | 3d | 2025-08-12 | 2025-08-14 |
| 34 | 3.1.2.3 | 顶面保温棉 | 6d | 2025-08-14 | 2025-08-19 |
| 35 | 3.1.2.4 | 白色微孔硅酸钙板吊顶 | 8d | 2025-08-14 | 2025-08-21 |
| 36 | 3.1.3 | **墙柱面工程** | 10d | 2025-08-14 | 2025-08-23 |
| 37 | 3.1.3.1 | 新建轻质隔墙 | 8d | 2025-08-14 | 2025-08-21 |
| 38 | 3.1.3.2 | 墙体白色无机涂料涂刷 | 4d | 2025-08-20 | 2025-08-23 |
| 39 | 3.1.4 | **地面工程** | 26d | 2025-08-21 | 2025-09-15 |
| 40 | 3.1.4.1 | 地面基层处理 | 4d | 2025-08-21 | 2025-08-24 |
| 41 | 3.1.4.2 | 防静电地板安装 | 16d | 2025-08-29 | 2025-09-13 |
| 42 | 3.1.4.3 | 门窗工程 | 18d | 2025-08-29 | 2025-09-15 |
| 43 | 3.2 | **配电工程** | 68d | 2025-08-15 | 2025-10-21 |
| 44 | 3.2.1 | **底座定位加工及安装** | 13d | 2025-08-31 | 2025-09-12 |
| 45 | 3.2.1.1 | 配电柜、配电箱基础加工安装 | 6d | 2025-08-31 | 2025-09-05 |
| 46 | 3.2.1.2 | UPS底座加工安装 | 8d | 2025-09-05 | 2025-09-12 |
| 47 | 3.2.2 | **桥架工程** | 14d | 2025-08-26 | 2025-09-08 |
| 48 | 3.2.2.1 | 梯式桥架吊筋 | 9d | 2025-08-26 | 2025-09-03 |
| 49 | 3.2.2.2 | 梯式桥架安装 | 11d | 2025-08-26 | 2025-09-05 |
| 50 | 3.2.2.3 | 封闭式桥架吊筋 | 12d | 2025-08-28 | 2025-09-08 |
| 51 | 3.2.2.4 | 封闭式桥架安装 | 12d | 2025-08-28 | 2025-09-08 |
| 52 | 3.2.3 | **机柜安装** | 21d | 2025-08-26 | 2025-09-15 |
| 53 | 3.2.3.1 | 机柜、列头柜底座定位、安装 | 11d | 2025-08-26 | 2025-09-05 |
| 54 | 3.2.3.2 | 冷通道及顶板天窗安装 | 11d | 2025-09-05 | 2025-09-15 |

| ID | WBS | Task | Duration | Start | Finish |
| --- | --- | --- | --- | --- | --- |
| 55 | 3.2.4 | **供电系统** | 36d | 2025-09-10 | 2025-10-15 |
| 56 | 3.2.4.1 | 配电柜安装 | 6d | 2025-09-10 | 2025-09-15 |
| 57 | 3.2.4.2 | 变压器安装 | 11d | 2025-09-16 | 2025-09-26 |
| 58 | 3.2.4.3 | UPS配电柜安装 | 6d | 2025-09-16 | 2025-09-21 |
| 59 | 3.2.4.4 | 电池架组装安装 | 4d | 2025-09-10 | 2025-09-13 |
| 60 | 3.2.4.5 | UPS电池安装 | 11d | 2025-09-13 | 2025-09-23 |
| 61 | 3.2.4.6 | UPS电池开关柜安装 | 16d | 2025-09-18 | 2025-10-03 |
| 62 | 3.2.4.7 | 电池连接线施工 | 22d | 2025-09-18 | 2025-10-09 |
| 63 | 3.2.4.8 | 外市割接 | 36d | 2025-09-10 | 2025-10-15 |
| 64 | 3.2.5 | **接地系统** | 42d | 2025-09-10 | 2025-10-21 |
| 65 | 3.2.5.1 | 接地扁铁预埋/焊接 | 21d | 2025-09-10 | 2025-09-30 |
| 66 | 3.2.5.2 | 接地铜排安装/接地线敷设 | 22d | 2025-09-30 | 2025-10-21 |
| 67 | 3.3 | **暖通工程** | 60d | 2025-08-15 | 2025-10-13 |
| 68 | 3.3.1 | **管道施工** | 60d | 2025-08-15 | 2025-10-13 |
| 69 | 3.3.1.1 | 各层孔洞标注或开洞 | 47d | 2025-08-15 | 2025-09-30 |
| 70 | 3.3.1.2 | 氟泵空调、风机安装 | 6d | 2025-09-16 | 2025-09-21 |
| 71 | 3.3.1.3 | 风管、冷媒管支架安装 | 11d | 2025-09-17 | 2025-09-27 |
| 72 | 3.3.1.4 | 风管、冷媒管安装及保温 | 16d | 2025-09-28 | 2025-10-13 |
| 73 | 3.3.1.5 | 风管、风阀、及百叶安装 | 5d | 2025-09-27 | 2025-10-01 |
| 74 | 3.4 | **弱电工程** | 23d | 2025-09-06 | 2025-09-28 |
| 75 | 3.4.1 | **弱电桥架施工** | 23d | 2025-09-06 | 2025-09-28 |
| 76 | 3.4.1.1 | 弱电桥架吊杆安装 | 8d | 2025-09-06 | 2025-09-13 |
| 77 | 3.4.1.2 | 弱电桥架安装 | 16d | 2025-09-13 | 2025-09-28 |
| 78 | 3.4.2 | **安防监控系统施工** | 1d | 2025-09-13 | 2025-09-13 |
| 79 | 3.4.2.1 | 线缆布放 | 1d | 2025-09-13 | 2025-09-13 |
| 80 | 4 | 测试验收 | 16d | 2025-10-15 | 2025-10-30 |
